Schedule from GanttProject, 2022-02-14 to 2022-06-13.
Holidays every year on 01-01, 01-06, 05-01, 08-15, 10-12, 11-01, 12-06, 12-08, 12-25

## Calendars

- Project calendar: Mon-Thu working; Fri-Sun off. Exceptions (off unless hours are given): 2022-02-28 (Días festivos en 28/2/22 0:00), 2022-04-14 (Días festivos en 14/4/22 0:00).

## Resources

| Resource | Rate |
| --- | --- |
| Desarrollador Python | 1202 |
| Documentalista | 2227 |
| Product Owner | 1675 |
| Scrum Master | 1523 |

## Schedule

| ID | WBS | Task | Duration | Start | Finish | Predecessors | Resources |
| --- | --- | --- | --- | --- | --- | --- | --- |
| 1 | 1 | **Sprint 0** | 0d | 2022-02-14 | 2022-02-14 |  |  |
| 2 | 1.1 | Comparar las APIs de Reconocimiento de Voz | 4d | 2022-02-14 | 2022-02-17 |  | Desarrollador Python [50%]; Documentalista [30%]; Product Owner [20%] |
| 3 | 1.2 | Comparar las APIs de Síntesis de Voz | 4d | 2022-02-21 | 2022-02-24 |  | Desarrollador Python [50%]; Documentalista [30%]; Product Owner [20%] |
| 4 | 1.3 | Diseñar la arquitectura del sistema | 8d | 2022-03-01 | 2022-03-14 | 2, 3 | Documentalista [50%]; Product Owner [50%] |
| 5 | 2 | **Sprint 1** | 0d | 2022-03-15 | 2022-03-15 | 4 | Product Owner [10%]; Scrum Master [10%] |
| 6 | 2.1 | RF-1. Hablar al Asistente | 4d | 2022-03-15 | 2022-03-21 | 4 | Desarrollador Python [35%]; Documentalista [10%] |
| 7 | 2.2 | RF-2. Escuchar una respuesta del Asistente | 4d | 2022-03-15 | 2022-03-21 | 4 | Desarrollador Python [35%]; Documentalista [10%] |
| 8 | 2.3 | RF-3. Sintetizar la voz de una pregunta en un texto | 4d | 2022-03-22 | 2022-03-28 | 6 | Desarrollador Python [35%]; Documentalista [10%] |
| 9 | 2.4 | RF-4. Generar un audio leyendo una respuesta | 4d | 2022-03-22 | 2022-03-28 | 7 | Desarrollador Python [35%]; Documentalista [10%] |
| 10 | 3 | **Sprint 2** | 0d | 2022-03-29 | 2022-03-29 | 9 | Product Owner [10%]; Scrum Master [10%] |
| 11 | 3.1 | RF-5. Relacionar una pregunta con su respuesta | 16d | 2022-03-29 | 2022-04-26 | 8, 9 | Desarrollador Python [40%]; Documentalista [10%] |
| 12 | 3.2 | Crear una funcionalidad para testear el comportamiento | 14d | 2022-03-31 | 2022-04-26 | 11SS+2d | Desarrollador Python [30%] |
| 13 | 3.3 | RF-7. Responder que se desconoce la respuesta a una pregunta | 2d | 2022-04-27 | 2022-04-28 | 11 | Desarrollador Python [70%]; Documentalista [10%] |
| 14 | 4 | **Sprint 3** | 0d | 2022-05-02 | 2022-05-02 | 13 | Product Owner [10%]; Scrum Master [10%] |
| 15 | 4.1 | RF-6. Avisar de que no se puede conectar a Internet | 1d | 2022-05-02 | 2022-05-02 | 11, 13 | Desarrollador Python [70%]; Documentalista [10%] |
| 16 | 4.2 | Crear funcionalidades extra para enseñar las posibilidades del Software | 12d | 2022-05-03 | 2022-05-23 | 15 | Desarrollador Python [50%]; Documentalista [10%] |
| 17 | 4.3 | Debugging de lo implementado hasta el momento | 16d | 2022-05-03 | 2022-05-30 | 15, 16SS | Desarrollador Python [20%] |
| 18 | 5 | **Sprint 4** | 0d | 2022-06-01 | 2022-06-01 | 17 | Desarrollador Python [50%]; Product Owner [5%]; Scrum Master [5%] |
| 19 | 5.1 | Aplicar la Licencia al Proyecto | 1d | 2022-06-01 | 2022-06-01 |  | Documentalista [40%] |
| 20 | 5.2 | Crear un README para explicar cómo instalar y usar el proyecto | 3d | 2022-06-02 | 2022-06-07 | 19 | Documentalista [40%] |
| 21 | 5.3 | Crear una Guía de Conducta para explicar cómo realizar contribuciones al proyecto | 3d | 2022-06-08 | 2022-06-13 | 19, 20 | Documentalista [40%] |
